# My Apartments Booking

Schedule from MS Project, 2014-08-28 to 2015-05-22, costs in $, A marks actual dates.

## Calendars

- CustomCalender: Mon off; Tue 22:00-24:00; Wed off; Thu 22:00-24:00; Fri off; Sat-Sun 10:00-12:00, 14:00-18:00. Exceptions (off unless hours are given): 2014-10-04 to 2014-10-06 (Eid-ul-Azha), 2014-10-20 08:00-12:00, 13:00-17:00, 2014-10-30 to 2014-10-31 08:00-12:00, 13:00-17:00, 2014-11-02 to 2014-11-03 (Ashura), 2014-11-05 08:00-12:00, 13:00-17:00, 2014-11-07 08:00-12:00, 13:00-17:00, 2014-11-19 08:00-12:00, 13:00-17:00, 2014-11-21 08:00-12:00, 13:00-17:00, 2014-11-26 08:00-12:00, 13:00-17:00, 2014-11-28 08:00-12:00, 13:00-17:00, 2014-12-05 08:00-12:00, 13:00-17:00, 2014-12-08 08:00-12:00, 13:00-17:00, 2014-12-12 08:00-12:00, 13:00-17:00, 2014-12-17 08:00-12:00, 13:00-17:00, 2015-03-23 (Pakistan Day).

## Resources

| Resource | Rate |
| --- | --- |
| Hassan Rasheed | 5 |
| Arslan Shafi | 5 |
| Faisal Durrani | 5 |
| Jawad Hameed | 5 |

## Schedule

| ID | WBS | Task | Type | Duration | Start | Finish | Predecessors | Complete | Remaining | Total slack | Constraint | Resources | Work | Actual work | Cost | Actual cost |
| --- | --- | --- | --- | --- | --- | --- | --- | --- | --- | --- | --- | --- | --- | --- | --- | --- |
| 1 | 1 | **Phase 1** |  | 42.5d? | 2014-08-28 A | 2014-12-17 |  | 91% | 3.82d? | 44.25d |  |  | 292h | 292h | 1,460 | 1,460 |
| 2 | 1.1 | **Scope** |  | 1.25d | 2014-08-28 A | 2014-08-31 A |  | 100% |  |  |  |  | 40h | 40h | 200 | 200 |
| 3 | 1.1.1 | Determine project scope |  | 10h | 2014-08-28 A | 2014-08-31 A |  | 100% |  |  |  | Hassan Rasheed; Arslan Shafi; Faisal Durrani; Jawad Hameed | 40h | 40h | 200 | 200 |
| 4 | 1.2 | **Analysis/Software Requirements** |  | 11.5d | 2014-08-31 A | 2014-10-17 A |  | 100% |  |  |  |  | 148h | 148h | 740 | 740 |
| 5 | 1.2.1 | Requirements Elicitation |  | 20h | 2014-08-31 A | 2014-09-07 A | 3 | 100% |  |  |  | Arslan Shafi; Hassan Rasheed | 40h | 40h | 200 | 200 |
| 6 | 1.2.2 | Draft software specifications |  | 20h | 2014-09-13 A | 2014-09-20 A | 5 | 100% |  |  |  | Faisal Durrani; Arslan Shafi | 40h | 40h | 200 | 200 |
| 7 | 1.2.3 | Review software specifications with team |  | 2h | 2014-09-20 A | 2014-09-20 A | 6 | 100% |  |  |  | Arslan Shafi; Faisal Durrani; Hassan Rasheed; Jawad Hameed | 8h | 8h | 40 | 40 |
| 8 | 1.2.4 | Prepare software requirement specifications V1.1 |  | 12h | 2014-09-22 A | 2014-10-01 A | 7 | 100% |  |  |  | Faisal Durrani; Arslan Shafi | 20h | 20h | 100 | 100 |
| 9 | 1.2.5 | Review software Requirement specifications V1.1 with team |  | 2h | 2014-10-02 A | 2014-10-03 A | 8 | 100% |  |  |  | Arslan Shafi; Faisal Durrani; Hassan Rasheed; Jawad Hameed | 8h | 8h | 40 | 40 |
| 10 | 1.2.6 | Prepare software requirement specifications V1.2 |  | 9.5h | 2014-09-28 A | 2014-10-12 A | 9 | 100% |  |  |  | Faisal Durrani; Jawad Hameed | 12h | 12h | 60 | 60 |
| 11 | 1.2.7 | Review software requirement specifications V1.2 with team |  | 2h | 2014-10-12 A | 2014-10-12 A | 10 | 100% |  |  |  | Arslan Shafi; Faisal Durrani; Hassan Rasheed; Jawad Hameed | 8h | 8h | 40 | 40 |
| 12 | 1.2.8 | Prepare software requirement specifications V1.3 |  | 2h | 2014-10-14 A | 2014-10-16 A | 11 | 100% |  |  | finish no earlier than 2014-10-16 | Hassan Rasheed; Arslan Shafi | 4h | 4h | 20 | 20 |
| 13 | 1.2.9 | Approve software Requirement specifications V1.3 |  | 2h | 2014-10-16 A | 2014-10-17 A | 12 | 100% |  |  | finish no earlier than 2014-10-16 | Arslan Shafi; Faisal Durrani; Hassan Rasheed; Jawad Hameed | 8h | 8h | 40 | 40 |
| 14 | 1.3 | **Design** |  | 24.25d? | 2014-10-20 A | 2014-12-11 A |  | 100% |  |  |  |  | 104h | 104h | 520 | 520 |
| 15 | 1.3.1 | Prepare Functional specifications V1.0 |  | 10h? | 2014-10-20 A | 2014-10-22 A |  | 100% |  |  | finish no earlier than 2014-10-22 |  |  |  |  |  |
| 16 | 1.3.2 | Review Functional specifications V1.0 with Team | manual | 3h | 2014-10-23 A | 2014-10-23 A | 15 | 100% |  |  | start no earlier than 2014-10-23 |  |  |  |  |  |
| 17 | 1.3.3 | Prepare Functional specifications V1.1 | manual | 47h | 2014-10-24 A | 2014-10-29 A | 16 | 100% |  |  | start no earlier than 2014-10-24 |  |  |  |  |  |
| 18 | 1.3.4 | Review Functional specifications V1.1 with Team |  | 2h? | 2014-10-30 A | 2014-10-30 A | 17 | 100% |  |  | start no earlier than 2014-10-30 |  |  |  |  |  |
| 19 | 1.3.5 | Prepare Functional specifications V1.2 |  | 24h? | 2014-10-31 A | 2014-11-05 A | 18 | 100% |  |  | finish no earlier than 2014-11-05 |  |  |  |  |  |
| 20 | 1.3.6 | Review Functional specifications V1.2 with Team | manual | 3h | 2014-11-06 A | 2014-11-06 A | 19 | 100% |  |  | finish no earlier than 2014-11-06 |  |  |  |  |  |
| 21 | 1.3.7 | Prepare Functional specifications V1.3 |  | 46h? | 2014-11-07 A | 2014-11-19 A | 20 | 100% |  |  | start no earlier than 2014-11-07 |  |  |  |  |  |
| 22 | 1.3.8 | Review Functional specifications V1.3 with Team | manual | 3h | 2014-11-20 A | 2014-11-20 A | 21 | 100% |  |  | finish no earlier than 2014-11-20 |  |  |  |  |  |
| 23 | 1.3.9 | Obtain approval to proceed | manual | 1h | 2014-11-20 A | 2014-11-20 A | 22 | 100% |  |  | start no earlier than 2014-11-20 |  |  |  |  |  |
| 24 | 1.3.10 | Incorporate feedback into functional specifications |  | 30h? | 2014-11-21 A | 2014-11-26 A | 23 | 100% |  |  | start no earlier than 2014-11-21 |  |  |  |  |  |
| 25 | 1.3.11 | Obtain approval to proceed |  | 1h? | 2014-11-27 A | 2014-11-27 A | 24 | 100% |  |  | finish no earlier than 2014-11-27 |  |  |  |  |  |
| 26 | 1.3.12 | Risk Management Plan |  | 22h? | 2014-11-28 A | 2014-12-04 A |  | 100% |  |  | finish no earlier than 2014-12-04 | Hassan Rasheed; Jawad Hameed | 44h | 44h | 220 | 220 |
| 27 | 1.3.13 | Quality Assurance Plan |  | 30h? | 2014-12-05 A | 2014-12-11 A |  | 100% |  |  | finish no earlier than 2014-12-11 | Arslan Shafi; Faisal Durrani | 60h | 60h | 300 | 300 |
| 28 | 1.4 | Other Changes |  | 30h? | 2014-12-12 | 2014-12-17 |  |  |  | 44.25d | start no earlier than 2014-12-12 |  |  |  |  |  |

| ID | WBS | Task | Type | Duration | Start | Finish | Complete | Remaining | Total slack | Constraint | Resources | Work | Actual work | Cost | Actual cost |
| --- | --- | --- | --- | --- | --- | --- | --- | --- | --- | --- | --- | --- | --- | --- | --- |
| 29 | 2 | **Phase 2** |  | 28.38d | 2015-02-24 A | 2015-05-22 | 15% | 24.26d |  |  |  | 996h | 188h | 4,980 | 940 |
| 30 | 2.1 | **Admin Side** |  | 18d | 2015-02-24 A | 2015-04-28 | 19% | 14.53d | 6.5d |  |  | 693h | 188h | 3,465 | 940 |
| 31 | 2.1.1 | Login Page | manual | 16h | 2015-02-24 A | 2015-02-26 A | 100% |  |  | finish no earlier than 2015-02-28 | Arslan Shafi | 16h | 16h | 80 | 80 |
| 32 | 2.1.2 | Vendor Request | manual | 12h | 2015-02-28 A | 2015-03-01 A | 100% |  |  | start no earlier than 2015-02-28 | Arslan Shafi | 12h | 12h | 60 | 60 |
| 33 | 2.1.3 | **Admin Management** |  | 10d | 2015-03-02 A | 2015-03-29 | 44% | 5.56d |  |  |  | 312h | 160h | 1,560 | 800 |
| 34 | 2.1.3.1 | Users | manual | 24h | 2015-03-02 A | 2015-03-04 A | 100% |  |  | start no earlier than 2015-03-02 | Arslan Shafi; Jawad Hameed | 48h | 48h | 240 | 240 |
| 35 | 2.1.3.2 | User Groups | manual | 16h | 2015-03-02 A | 2015-03-03 A | 100% |  |  | start no earlier than 2015-03-02 | Faisal Durrani; Hassan Rasheed | 32h | 32h | 160 | 160 |
| 36 | 2.1.3.3 | User Property | manual | 24h | 2015-03-05 A | 2015-03-08 A | 100% |  |  | start no earlier than 2015-03-05 | Arslan Shafi; Jawad Hameed | 48h | 48h | 240 | 240 |
| 37 | 2.1.3.4 | Vendor Request |  | 16h? | 2015-03-03 A | 2015-03-10 A | 100% |  |  | finish no earlier than 2015-03-10 | Faisal Durrani; Hassan Rasheed | 32h | 32h | 160 | 160 |
| 38 | 2.1.3.5 | Email Templates |  | 12h? | 2015-03-14 | 2015-03-17 |  |  | 18.5d | finish no earlier than 2015-03-17 | Arslan Shafi; Hassan Rasheed | 24h |  | 120 |  |
| 39 | 2.1.3.6 | Application Errors |  | 24h? | 2015-03-14 | 2015-03-22 |  |  | 17d | start no earlier than 2015-03-14 | Faisal Durrani; Jawad Hameed | 48h |  | 240 |  |
| 40 | 2.1.3.7 | Set Banner |  | 16h? | 2015-03-17 | 2015-03-22 |  |  | 16.5d | start no earlier than 2015-03-17 | Arslan Shafi | 16h |  | 80 |  |
| 41 | 2.1.3.8 | Website CMS |  | 16h? | 2015-03-21 | 2015-03-27 |  |  | 16d | start no earlier than 2015-03-21 | Faisal Durrani; Jawad Hameed | 32h |  | 160 |  |
| 42 | 2.1.3.9 | Website Links |  | 16h? | 2015-03-17 | 2015-03-22 |  |  | 16.5d | start no earlier than 2015-03-17 | Hassan Rasheed | 16h |  | 80 |  |
| 43 | 2.1.3.10 | Posted Reviews & Comments |  | 16h? | 2015-03-24 | 2015-03-29 |  |  | 14.5d | start no earlier than 2015-03-24 | Arslan Shafi | 16h |  | 80 |  |
| 44 | 2.1.4 | **Property Setting** |  | 5.75d | 2015-03-24 | 2015-04-05 |  |  |  |  |  | 97h |  | 485 |  |
| 45 | 2.1.4.1 | City Managment |  | 14h? | 2015-03-24 | 2015-03-29 |  |  | 14.75d | start no earlier than 2015-03-24 | Faisal Durrani | 14h |  | 70 |  |
| 46 | 2.1.4.2 | Town Management |  | 12h? | 2015-03-24 | 2015-03-29 |  |  | 15d | start no earlier than 2015-03-24 | Jawad Hameed | 12h |  | 60 |  |
| 47 | 2.1.4.3 | Facility Management |  | 14h? | 2015-03-24 | 2015-03-29 |  |  | 14.75d | start no earlier than 2015-03-24 | Hassan Rasheed | 14h |  | 70 |  |
| 48 | 2.1.4.4 | Facility Profile |  | 16h? | 2015-03-31 | 2015-04-05 |  |  | 12.5d | start no earlier than 2015-03-30 | Arslan Shafi | 16h |  | 80 |  |
| 49 | 2.1.4.5 | Policy Profile |  | 12h? | 2015-03-31 | 2015-04-05 |  |  | 13d | start no earlier than 2015-03-31 | Hassan Rasheed | 12h |  | 60 |  |
| 50 | 2.1.4.6 | Property Categories |  | 15h? | 2015-03-31 | 2015-04-05 |  |  | 12.62d | start no earlier than 2015-03-31 | Jawad Hameed | 15h |  | 75 |  |
| 51 | 2.1.4.7 | Base Comission |  | 14h? | 2015-03-31 | 2015-04-05 |  |  | 12.75d | start no earlier than 2015-03-31 | Faisal Durrani | 14h |  | 70 |  |
| 52 | 2.1.5 | **Property Managment** |  | 5.75d | 2015-04-07 | 2015-04-21 |  |  |  |  |  | 151h |  | 755 |  |
| 53 | 2.1.5.1 | Property List |  | 16h? | 2015-04-07 | 2015-04-12 |  |  | 10.5d | start no earlier than 2015-04-07 | Hassan Rasheed | 16h |  | 80 |  |
| 54 | 2.1.5.2 | Property Facilities | manual | 16h? | 2015-04-07 | 2015-04-12 |  |  |  |  | Jawad Hameed | 16h |  | 80 |  |
| 55 | 2.1.5.3 | Property Policy |  | 16h? | 2015-04-07 | 2015-04-12 |  |  | 2d |  | Faisal Durrani | 16h |  | 80 |  |
| 56 | 2.1.5.4 | Property Graphics |  | 24h? | 2015-04-07 | 2015-04-18 |  |  | 1d |  | Arslan Shafi | 24h |  | 120 |  |
| 57 | 2.1.5.5 | Property Promotions | manual | 16h? | 2015-04-14 | 2015-04-16 |  |  |  | start no earlier than 2015-04-14 | Jawad Hameed | 16h |  | 80 |  |
| 58 | 2.1.5.6 | Featured Property | manual | 16h? | 2015-04-14 | 2015-04-16 |  |  |  | start no earlier than 2015-04-14 | Faisal Durrani | 16h |  | 80 |  |
| 59 | 2.1.5.7 | Property of Month | manual | 16h? | 2015-04-15 | 2015-04-16 |  |  |  | start no earlier than 2015-04-15 | Hassan Rasheed | 16h |  | 80 |  |
| 60 | 2.1.5.8 | Property Comission | manual | 8h? | 2015-04-18 | 2015-04-18 |  |  |  | start no earlier than 2015-04-18 | Faisal Durrani | 8h |  | 40 |  |
| 61 | 2.1.5.9 | Property Calender | manual | 8h? | 2015-04-19 | 2015-04-21 |  |  |  | start no earlier than 2015-04-19 | Arslan Shafi | 8h |  | 40 |  |
| 62 | 2.1.5.10 | Property Approved/UnApproved List | manual | 15h? | 2015-04-18 | 2015-04-21 |  |  |  | start no earlier than 2015-04-18 | Hassan Rasheed | 15h |  | 75 |  |

| ID | WBS | Task | Type | Duration | Start | Finish | Total slack | Constraint | Resources | Work | Cost |
| --- | --- | --- | --- | --- | --- | --- | --- | --- | --- | --- | --- |
| 63 | 2.1.6 | **Reports** |  | 2.12d | 2015-04-18 | 2015-04-23 |  |  |  | 48h | 240 |
| 64 | 2.1.6.1 | Booking Income Report | manual | 14h? | 2015-04-18 | 2015-04-19 |  | start no earlier than 2015-04-18 | Jawad Hameed | 14h | 70 |
| 65 | 2.1.6.2 | Vendor Property List Report | manual | 17h? | 2015-04-21 | 2015-04-23 |  | start no earlier than 2015-04-21 | Faisal Durrani | 17h | 85 |
| 66 | 2.1.6.3 | Booking Comission Report | manual | 17h? | 2015-04-21 | 2015-04-23 |  | start no earlier than 2015-04-21 | Jawad Hameed | 17h | 85 |
| 67 | 2.1.7 | **Property Booking** |  | 3.5d | 2015-04-23 | 2015-04-28 |  |  |  | 57h | 285 |
| 68 | 2.1.7.1 | Booking History |  | 12h? | 2015-04-23 | 2015-04-26 | 0.25d |  | Faisal Durrani | 12h | 60 |
| 69 | 2.1.7.2 | Search booking |  | 12h? | 2015-04-23 | 2015-04-26 | 0.25d |  | Hassan Rasheed | 12h | 60 |
| 70 | 2.1.7.3 | Change Booking |  | 12h? | 2015-04-23 | 2015-04-26 | 0.25d |  | Jawad Hameed | 12h | 60 |
| 71 | 2.1.7.4 | Create Booking |  | 12h? | 2015-04-23 | 2015-04-26 | 0.25d |  | Arslan Shafi | 12h | 60 |
| 72 | 2.1.7.5 | Update Customer details | manual | 9h? | 2015-04-28 | 2015-04-28 |  | start no earlier than 2015-04-28 | Arslan Shafi | 9h | 45 |
| 73 | 2.2 | **Client Side** |  | 4.75d | 2015-04-30 | 2015-05-09 |  |  |  | 110h | 550 |
| 74 | 2.2.1 | **Home Page** |  | 22h | 2015-04-30 | 2015-05-02 |  |  |  | 22h | 110 |
| 75 | 2.2.1.1 | Search Apartment + Hot Deals | manual | 22h? | 2015-04-30 | 2015-05-02 |  | start no earlier than 2015-04-30 | Arslan Shafi | 22h | 110 |
| 76 | 2.2.2 | **Apartment Full List Page** |  | 28h | 2015-04-30 | 2015-05-03 |  |  |  | 28h | 140 |
| 77 | 2.2.2.1 | Booking & Payment | manual | 28h? | 2015-04-30 | 2015-05-03 |  | start no earlier than 2015-04-30 | Hassan Rasheed | 28h | 140 |
| 78 | 2.2.3 | My Bookings |  | 12h? | 2015-04-30 | 2015-05-03 | 1.5d |  | Jawad Hameed | 12h | 60 |
| 79 | 2.2.4 | Viewed Apartments |  | 12h? | 2015-04-30 | 2015-05-03 | 1.5d |  | Faisal Durrani | 12h | 60 |
| 80 | 2.2.5 | Map |  | 10h? | 2015-05-05 | 2015-05-09 | 3.25d | start no earlier than 2015-05-05 | Arslan Shafi | 10h | 50 |
| 81 | 2.2.6 | Email Enquiry |  | 10h? | 2015-05-05 | 2015-05-09 | 3.25d | start no earlier than 2015-05-05 | Jawad Hameed | 10h | 50 |
| 82 | 2.2.7 | FAQ'S |  | 8h? | 2015-05-05 | 2015-05-09 | 3.5d | start no earlier than 2015-05-05 | Hassan Rasheed | 8h | 40 |
| 83 | 2.2.8 | Contact US |  | 8h? | 2015-05-05 | 2015-05-09 | 3.5d | start no earlier than 2015-05-05 | Faisal Durrani | 8h | 40 |
| 84 | 2.3 | **Testing** |  | 2.12d | 2015-05-10 | 2015-05-16 |  |  |  | 17h | 85 |
| 85 | 2.3.1 | Application Testing | manual | 2.12d | 2015-05-10 | 2015-05-16 |  |  | Arslan Shafi | 17h | 85 |
| 86 | 2.4 | **Bug Fixing** |  | 4d | 2015-05-12 | 2015-05-21 |  |  |  | 128h | 640 |
| 87 | 2.4.1 | Application Issue Fixing | manual | 4d | 2015-05-12 | 2015-05-21 |  |  | Arslan Shafi; Faisal Durrani; Hassan Rasheed; Jawad Hameed | 128h | 640 |
| 88 | 2.5 | Other Changes |  | 3d? | 2015-05-10 | 2015-05-21 | 0.25d | finish no earlier than 2015-05-21 | Arslan Shafi; Hassan Rasheed | 48h | 240 |
